# Veteran Connect Post-2026 PI Claim Starter Pack MVP

Schedule from ProjectLibre, 2026-05-11 to 2026-12-22.

## Calendars

- Standard[Imported]: Mon-Fri 08:00-12:00, 13:00-17:00; Sat-Sun off.

## Resources

| Resource | Group |
| --- | --- |
| Unassigned |  |
| Product / Compliance | MVP Build |
| Cloud / DevOps | MVP Build |
| Backend | MVP Build |
| Web | MVP Build |
| AI / Knowledge | MVP Build |
| Documents | MVP Build |
| Mobile | MVP Build |
| Security / QA | MVP Build |
| Pilot / Operations | MVP Build |

## Schedule

| ID | WBS | Task | Type | Duration | Start | Finish | Predecessors | Complete | Baseline start | Baseline finish | Constraint | Resources |
| --- | --- | --- | --- | --- | --- | --- | --- | --- | --- | --- | --- | --- |
| 1 | 1 | **Phase 1: Product scope and compliance foundation** |  | 1d? | 2026-05-11 | 2026-05-11 |  | 100% | 2026-05-11 | 2026-06-03 |  |  |
| 2 | 1.1 | Confirm MVP product definition |  | 1d | 2026-05-11 | 2026-05-11 |  | 100% | 2026-05-11 | 2026-05-20 |  |  |
| 3 | 1.2 | Confirm version 1 exclusions |  | 1d | 2026-05-11 | 2026-05-11 | 2 | 100% | 2026-05-11 | 2026-05-11 |  |  |
| 4 | 1.3 | Define supported post-2026 claim scenarios |  | 1d | 2026-05-11 | 2026-05-11 | 3 | 100% | 2026-05-12 | 2026-05-12 |  |  |
| 5 | 1.4 | Draft disclaimer and AI-use wording |  | 1d? | 2026-05-11 | 2026-05-11 | 4 | 100% | 2026-05-13 | 2026-05-13 |  |  |
| 6 | 1.5 | Define first user journey |  | 1d? | 2026-05-11 | 2026-05-11 | 5 | 100% | 2026-05-14 | 2026-05-14 |  |  |
| 7 | 1.6 | Define MVP feature list |  | 1d? | 2026-05-11 | 2026-05-11 | 6 | 100% | 2026-05-15 | 2026-05-15 |  |  |
| 8 | 1.7 | Define first data objects |  | 1d? | 2026-05-11 | 2026-05-11 | 7 | 100% | 2026-05-18 | 2026-05-18 | start no earlier than 2026-05-11 |  |
| 9 | 1.8 | Define Phase 1 acceptance criteria |  | 1d? | 2026-05-11 | 2026-05-11 | 8 | 100% | 2026-05-19 | 2026-05-19 | start no earlier than 2026-05-11 |  |
| 10 | 1.9 | Review Phase 1 pack before build starts |  | 1d? | 2026-05-11 | 2026-05-11 | 9 | 100% | 2026-05-20 | 2026-05-20 |  |  |
| 11 | 2 | **Phase 2: Google Cloud foundation** |  | 2d? | 2026-05-11 | 2026-05-12 |  | 100% | 2026-06-04 | 2026-06-17 |  |  |
| 12 | 2.1 | Create Google Cloud dev/test/prod project structure |  | 2d? | 2026-05-11 | 2026-05-12 | 10 | 100% | 2026-06-04 | 2026-06-05 |  | Cloud / DevOps |
| 13 | 2.2 | Enable core Google Cloud services |  | 1d? | 2026-05-11 | 2026-05-11 | 12 | 100% | 2026-06-08 | 2026-06-08 |  | Cloud / DevOps |
| 14 | 2.3 | Configure IAM, service accounts and Secret Manager |  | 2d? | 2026-05-11 | 2026-05-12 | 13 | 100% | 2026-06-09 | 2026-06-10 |  | Cloud / DevOps |
| 15 | 2.4 | Create baseline IAM/service account plan |  | 1d? | 2026-05-11 | 2026-05-11 | 14 | 100% |  |  |  |  |
| 16 | 2.5 | Create dev service accounts |  | 1d? | 2026-05-11 | 2026-05-11 | 15 | 100% |  |  |  |  |
| 17 | 2.6 | Verify dev service accounts |  | 1d? | 2026-05-11 | 2026-05-11 | 16 | 100% |  |  |  |  |
| 18 | 2.7 | Create Secret Manager baseline plan |  | 1d? | 2026-05-11 | 2026-05-11 | 17 | 100% |  |  |  |  |
| 19 | 2.8 | Create initial placeholder secrets |  | 1d? | 2026-05-11 | 2026-05-11 | 18 | 100% |  |  |  |  |
| 20 | 2.9 | Save IAM and Secret Manager setup notes |  | 1d? | 2026-05-11 | 2026-05-11 | 19 | 100% |  |  |  |  |
| 21 | 2.4 | Configure Firebase Authentication and App Check |  | 2d? | 2026-05-11 | 2026-05-12 | 20 | 100% | 2026-06-11 | 2026-06-12 |  | Cloud / DevOps |
| 22 | 2.5 | Create Cloud Run API skeleton and CI/CD |  | 2d? | 2026-05-11 | 2026-05-12 | 21 | 100% | 2026-06-15 | 2026-06-16 |  | Cloud / DevOps |
| 23 | 2.6 | Provision Cloud SQL PostgreSQL and Cloud Storage buckets |  | 1d? | 2026-05-11 | 2026-05-11 | 22 | 100% | 2026-06-17 | 2026-06-17 |  | Cloud / DevOps |
| 24 | 2.13 | Connect Cloud Run API to Cloud SQL and Secret Manager |  | 1d? | 2026-05-11 | 2026-05-11 | 23 | 100% |  |  |  |  |
| 25 | 2.M | Milestone: Phase 2 complete | milestone | 0d? | 2026-05-11 | 2026-05-11 | 24 | 100% | 2026-06-17 | 2026-06-17 |  | Cloud / DevOps |

Notes:
- 1: MVP boundaries, post-2026 claim scenarios, disclaimers, privacy wording and first user journey are agreed.
- 2: Required before build starts
- 3: Locks out scoring, compensation estimates and outcome prediction
- 4: Defines new condition, worsening, new plus existing, evidence prep and unsure scenarios
- 5: Required before onboarding and AI outputs
- 6: Provides build path for wireframes and API design
- 7: Locks initial build scope
- 8: Feeds database schema planning
- 9: Defines done for Phase 1
- 10: Final gate before Phase 2 cloud setup
- 11: Cloud Run, Cloud SQL, Cloud Storage, Firebase Authentication, Secret Manager and CI/CD foundation are working in dev/test.
- 12: Set up initial environment separation and naming conventions. New Google Cloud project creation failed due to project quota. Plan B adopted: use existing project dva-sop-dev with logical environment prefixes vapi-dev, vapi-test and vapi-prod. Split into separate projects later after quota increase.
- 13: Enable Cloud Run, Cloud SQL, Cloud Storage, Secret Manager, Cloud Build, Artifact Registry, Vertex AI, Document AI, Logging and Monitoring.
- 14: Set least-privilege service accounts and store all secrets outside source control.
- 21: Set up auth for web/mobile and basic client abuse protection.
- 22: Deploy a minimal ASP.NET Core API to Cloud Run from source control.
- 23: Create private storage buckets and initial database instance.
- 25: Cloud Run, Cloud SQL, Cloud Storage, Firebase Authentication, Secret Manager and CI/CD foundation are working in dev/test.

| ID | WBS | Task | Type | Duration | Start | Finish | Predecessors | Complete | Baseline start | Baseline finish | Resources |
| --- | --- | --- | --- | --- | --- | --- | --- | --- | --- | --- | --- |
| 26 | 3 | **Phase 3: Core backend and database** |  | 4d? | 2026-05-12 | 2026-05-15 |  | 100% | 2026-06-18 | 2026-07-15 |  |
| 27 | 3.1 | Create database schema and migrations |  | 3d? | 2026-05-12 | 2026-05-14 | 25 | 100% | 2026-06-18 | 2026-06-22 | Backend |
| 28 | 3.2 | Implement Firebase token verification and user service |  | 3d? | 2026-05-12 | 2026-05-14 | 27 | 100% | 2026-06-23 | 2026-06-25 | Backend |
| 29 | 3.3 | Build claim workspace API (CRUD) |  | 4d? | 2026-05-12 | 2026-05-15 | 28 | 100% | 2026-06-26 | 2026-07-01 | Backend |
| 30 | 3.4 | Build condition and accepted-condition history APIs |  | 4d? | 2026-05-12 | 2026-05-15 | 29 | 100% | 2026-07-02 | 2026-07-07 | Backend |
| 31 | 3.5 | Build guided question response API |  | 1d? | 2026-05-12 | 2026-05-12 | 30 | 100% |  |  |  |
| 32 | 3.5 | Build evidence metadata and audit APIs |  | 3d? | 2026-05-12 | 2026-05-14 | 31 | 100% | 2026-07-08 | 2026-07-10 | Backend |
| 33 | 3.7 | Build evidence upload URL API |  | 1d? | 2026-05-12 | 2026-05-12 | 32 | 100% |  |  |  |
| 34 | 3.8 | Build evidence gap tracker API |  | 1d? | 2026-05-12 | 2026-05-12 | 33 | 100% |  |  |  |
| 35 | 3.9 | Build AI draft metadata API |  | 1d? | 2026-05-12 | 2026-05-12 | 34 | 100% |  |  |  |
| 36 | 3.10 | Build generated document metadata API |  | 1d? | 2026-05-12 | 2026-05-12 | 35 | 100% |  |  |  |
| 37 | 3.11 | Refactor shared auth and ownership helpers |  | 1d? | 2026-05-12 | 2026-05-12 | 36 | 100% |  |  |  |
| 38 | 3.12 | Create API smoke test script |  | 1d? | 2026-05-12 | 2026-05-12 | 37 | 100% |  |  |  |
| 39 | 3.13 | Redeploy and verify Phase 3 backend |  | 1d? | 2026-05-12 | 2026-05-12 | 38 | 100% |  |  |  |
| 40 | 3.6 | Add backend tests and API documentation |  | 3d? | 2026-05-12 | 2026-05-14 | 39 | 100% | 2026-07-13 | 2026-07-15 | Backend |
| 41 | 3.M | Milestone: Phase 3 complete | milestone | 0d? | 2026-05-12 | 2026-05-12 | 40 | 100% | 2026-07-15 | 2026-07-15 | Backend |
| 42 | 4 | **Phase 4: Web MVP shell** |  | 1d? | 2026-05-12 | 2026-05-12 | 40 | 100% | 2026-07-16 | 2026-08-05 |  |
| 43 | 4.1 | Create Next.js app scaffolding and routing |  | 1d | 2026-05-12 | 2026-05-12 | 41 | 100% |  |  |  |
| 44 | 4.2 | Configure web app environment variables |  | 1d | 2026-05-12 | 2026-05-12 | 43 | 100% |  |  |  |
| 45 | 4.3 | Connect Firebase web authentication |  | 1d | 2026-05-12 | 2026-05-12 | 44 | 100% |  |  |  |
| 46 | 4.4 | Build login and session UI |  | 1d | 2026-05-12 | 2026-05-12 | 45 | 100% |  |  |  |
| 47 | 4.5 | Build dashboard and claim workspace list |  | 1d | 2026-05-12 | 2026-05-12 | 46 | 100% |  |  |  |
| 48 | 4.6 | Build new claim and pathway selector |  | 1d | 2026-05-12 | 2026-05-12 | 47 | 100% |  |  |  |
| 49 | 4.7 | Build claim workspace detail page |  | 1d | 2026-05-12 | 2026-05-12 | 48 | 100% |  |  |  |
| 50 | 4.8 | Build condition intake UI |  | 1d | 2026-05-12 | 2026-05-12 | 49 | 100% |  |  |  |
| 51 | 4.9 | Build accepted-condition history UI |  | 1d | 2026-05-12 | 2026-05-12 | 50 | 100% |  |  |  |
| 52 | 4.10 | Build guided question response UI |  | 1d | 2026-05-12 | 2026-05-12 | 51 | 100% |  |  |  |
| 53 | 4.11 | Build evidence checklist shell |  | 1d | 2026-05-12 | 2026-05-12 | 52 | 100% |  |  |  |
| 54 | 4.12 | Build evidence metadata UI |  | 1d | 2026-05-12 | 2026-05-12 | 53 | 100% |  |  |  |
| 55 | 4.13 | Build evidence upload UI |  | 1d | 2026-05-12 | 2026-05-12 | 54 | 100% |  |  |  |
| 56 | 4.1 | Build evidence gap tracker UI |  | 1d | 2026-05-12 | 2026-05-12 | 55 | 100% | 2026-07-16 | 2026-07-17 | Web |
| 57 | 4.2 | Build AI draft review UI |  | 1d | 2026-05-12 | 2026-05-12 | 56 | 100% | 2026-07-20 | 2026-07-22 | Web |
| 58 | 4.3 | Build generated document list UI |  | 1d | 2026-05-12 | 2026-05-12 | 57 | 100% | 2026-07-23 | 2026-07-27 | Web |
| 59 | 4.4 | Add protected route handling |  | 1d | 2026-05-12 | 2026-05-12 | 58 | 100% | 2026-07-28 | 2026-07-30 | Web |
| 60 | 4.5 | Add API client service layer |  | 1d | 2026-05-12 | 2026-05-12 | 59 | 100% | 2026-07-31 | 2026-08-04 | Web |
| 61 | 4.6 | Add web smoke test checklist |  | 1d | 2026-05-12 | 2026-05-12 | 60 | 100% | 2026-08-05 | 2026-08-05 | Web |
| 62 | 4.M | Milestone: Phase 4 complete | milestone | 0d? | 2026-05-12 | 2026-05-12 | 61 | 100% | 2026-08-05 | 2026-08-05 | Web |

Notes:
- 26: Backend can create users, claims, conditions, accepted-condition history, evidence metadata and audit events.
- 27: Implement users, claim_workspaces, conditions, accepted_condition_history, evidence_items, question_responses, evidence_gaps, ai_outputs, generated_documents and audit_events.
- 28: Verify identity tokens and map Firebase users to internal users.
- 29: Create, list, read and update post-2026 claim workspaces.
- 30: Capture condition details and previous VEA/DRCA/MRCA accepted condition history where relevant.
- 32: Store evidence records and auditable user/system actions.
- 40: Add smoke tests, basic API contract docs and error handling.
- 41: Backend can create users, claims, conditions, accepted-condition history, evidence metadata and audit events.
- 42: A user can log in, create a claim workspace, select a pathway and enter basic condition details in the web app.
- 56: Set up the web app structure, protected routes and base layout.
- 57: Connect Firebase sign-in to the backend session flow.
- 58: Show claim workspaces and basic workspace status.
- 59: Implement the post-2026 scenario selector as the first key workflow screen.
- 60: Capture initial condition details and diagnosis status.
- 61: Show the initial evidence checklist placeholder linked to a claim workspace.
- 62: A user can log in, create a claim workspace, select a pathway and enter basic condition details in the web app.

| ID | WBS | Task | Type | Duration | Start | Finish | Predecessors | Baseline start | Baseline finish | Resources |
| --- | --- | --- | --- | --- | --- | --- | --- | --- | --- | --- |
| 63 | 5 | **Phase 5: GARP M-aware question engine** |  | 20d? | 2026-05-13 | 2026-06-09 | 61 | 2026-08-06 | 2026-09-02 |  |
| 64 | 5.1 | Create question template model and renderer |  | 3d? | 2026-05-13 | 2026-05-15 | 62 | 2026-08-06 | 2026-08-10 | Product / Compliance |
| 65 | 5.2 | Build diagnosis, symptoms and treatment groups |  | 4d? | 2026-05-18 | 2026-05-21 | 64 | 2026-08-11 | 2026-08-14 | Product / Compliance |
| 66 | 5.3 | Build stability, functional, lifestyle and work impact groups |  | 5d? | 2026-05-22 | 2026-05-28 | 65 | 2026-08-17 | 2026-08-21 | Product / Compliance |
| 67 | 5.4 | Build worsening and previous compensation groups |  | 4d? | 2026-05-29 | 2026-06-03 | 66 | 2026-08-24 | 2026-08-27 | Product / Compliance |
| 68 | 5.5 | Add save/resume validation and structured summary |  | 4d? | 2026-06-04 | 2026-06-09 | 67 | 2026-08-28 | 2026-09-02 | Product / Compliance |
| 69 | 5.M | Milestone: Phase 5 complete | milestone | 0d? | 2026-06-09 | 2026-06-09 | 68 | 2026-09-02 | 2026-09-02 | Product / Compliance |
| 70 | 6 | **Phase 6: Evidence upload and gap tracker** |  | 15d? | 2026-06-10 | 2026-06-30 | 69 | 2026-09-03 | 2026-09-23 |  |
| 71 | 6.1 | Build signed upload and download URL flow |  | 3d? | 2026-06-10 | 2026-06-12 | 69 | 2026-09-03 | 2026-09-07 | Backend |
| 72 | 6.2 | Build evidence item tagging and condition linking |  | 3d? | 2026-06-15 | 2026-06-17 | 71 | 2026-09-08 | 2026-09-10 | Backend |
| 73 | 6.3 | Build evidence status workflow |  | 3d? | 2026-06-18 | 2026-06-22 | 72 | 2026-09-11 | 2026-09-15 | Backend |
| 74 | 6.4 | Build evidence gap rules engine |  | 4d? | 2026-06-23 | 2026-06-26 | 73 | 2026-09-16 | 2026-09-21 | Backend |
| 75 | 6.5 | Build gap dashboard and reminder prompts |  | 2d? | 2026-06-29 | 2026-06-30 | 74 | 2026-09-22 | 2026-09-23 | Backend |
| 76 | 6.M | Milestone: Phase 6 complete | milestone | 0d? | 2026-06-30 | 2026-06-30 | 75 | 2026-09-23 | 2026-09-23 | Backend |
| 77 | 7 | **Phase 7: AI/RAG knowledge base** |  | 25d? | 2026-06-10 | 2026-07-14 |  | 2026-09-03 | 2026-10-07 |  |
| 78 | 7.1 | Create approved source registry and knowledge base structure |  | 4d? | 2026-06-10 | 2026-06-15 | 69 | 2026-09-03 | 2026-09-08 | AI / Knowledge |
| 79 | 7.2 | Load GARP M, DVA reform references and internal templates |  | 4d? | 2026-06-16 | 2026-06-19 | 78 | 2026-09-09 | 2026-09-14 | AI / Knowledge |
| 80 | 7.3 | Build RAG retrieval API |  | 5d? | 2026-06-22 | 2026-06-26 | 79 | 2026-09-15 | 2026-09-21 | AI / Knowledge |
| 81 | 7.4 | Build prompt templates and safety guardrails |  | 4d? | 2026-06-29 | 2026-07-02 | 80 | 2026-09-22 | 2026-09-25 | AI / Knowledge |
| 82 | 7.5 | Generate veteran statement and worsening summary drafts |  | 4d? | 2026-07-03 | 2026-07-08 | 81 | 2026-09-28 | 2026-10-01 | AI / Knowledge |
| 83 | 7.6 | Generate doctor questions, evidence gap summary and doctor letter |  | 4d? | 2026-07-09 | 2026-07-14 | 82 | 2026-10-02 | 2026-10-07 | AI / Knowledge |
| 84 | 7.M | Milestone: Phase 7 complete | milestone | 0d? | 2026-07-14 | 2026-07-14 | 83 | 2026-10-07 | 2026-10-07 | AI / Knowledge |
| 85 | 8 | **Phase 8: Claim Starter Pack document generation** |  | 15d? | 2026-07-15 | 2026-08-04 |  | 2026-10-08 | 2026-10-28 |  |
| 86 | 8.1 | Design DOCX starter pack templates |  | 4d? | 2026-07-15 | 2026-07-20 | 76, 84 | 2026-10-08 | 2026-10-13 | Documents |
| 87 | 8.2 | Build document generation service |  | 4d? | 2026-07-21 | 2026-07-24 | 86 | 2026-10-14 | 2026-10-19 | Documents |
| 88 | 8.3 | Add PDF conversion and storage versioning |  | 3d? | 2026-07-27 | 2026-07-29 | 87 | 2026-10-20 | 2026-10-22 | Documents |
| 89 | 8.4 | Add document download signed URL flow |  | 2d? | 2026-07-30 | 2026-07-31 | 88 | 2026-10-23 | 2026-10-26 | Documents |
| 90 | 8.5 | Enforce reviewed-only content and test exports |  | 2d? | 2026-08-03 | 2026-08-04 | 89 | 2026-10-27 | 2026-10-28 | Documents |
| 91 | 8.M | Milestone: Phase 8 complete | milestone | 0d? | 2026-08-04 | 2026-08-04 | 90 | 2026-10-28 | 2026-10-28 | Documents |

Notes:
- 63: The app guides the user through structured questions and produces a useful evidence summary without calculating points.
- 64: Make question groups configurable instead of hard-coded in screen logic.
- 65: Capture condition identity, diagnosis status, symptoms, treatment and medications.
- 66: Collect structured daily life and work impact evidence in plain English.
- 67: Capture previous DVA decision/assessment context and what has changed.
- 68: Generate a structured summary from saved answers for later AI and document output.
- 69: The app guides the user through structured questions and produces a useful evidence summary without calculating points.
- 70: Users can upload evidence, tag it, link it to conditions and see missing-evidence prompts.
- 71: Keep files private and access them through controlled signed URLs.
- 72: Let users categorise documents and attach them to a condition.
- 73: Track missing, uploaded, requested, confirmed and not-required states.
- 74: Flag missing diagnosis evidence, treatment evidence, previous assessment letters, doctor reports and worsening evidence.
- 75: Display evidence gaps in a veteran-friendly checklist view.
- 76: Users can upload evidence, tag it, link it to conditions and see missing-evidence prompts.
- 77: The app generates grounded drafts from user facts and approved knowledge only, with source references and review warnings.
- 78: Store source metadata, versioning, titles, URLs, summaries and approved excerpts/templates.
- 79: Seed the first approved knowledge collection and plain-English templates.
- 80: Retrieve relevant source material before asking Gemini to draft content.
- 81: Prevent outcome predictions, GARP scoring, fake medical facts and unsupported claims.
- 82: Create first AI drafting workflows from user-entered facts.
- 83: Create additional AI outputs for the starter pack and doctor prep workflow.
- 84: The app generates grounded drafts from user facts and approved knowledge only, with source references and review warnings.
- 85: The app generates and stores a DOCX/PDF Post-2026 PI Claim Starter Pack using confirmed content only.
- 86: Create cover page, disclaimer, condition summary, evidence checklist, gap tracker, statement draft and review checklist sections.
- 87: Generate DOCX from structured claim workspace data and approved drafts.
- 88: Create PDF output and keep document versions in Cloud Storage.
- 89: Allow secure document download from the web/mobile clients.
- 90: Ensure only user-confirmed answers and approved AI drafts are exported.
- 91: The app generates and stores a DOCX/PDF Post-2026 PI Claim Starter Pack using confirmed content only.

| ID | WBS | Task | Type | Duration | Start | Finish | Predecessors | Baseline start | Baseline finish | Resources |
| --- | --- | --- | --- | --- | --- | --- | --- | --- | --- | --- |
| 92 | 9 | **Phase 9: Doctor guidance pack** |  | 10d? | 2026-08-05 | 2026-08-18 |  | 2026-10-29 | 2026-11-11 |  |
| 93 | 9.1 | Design doctor guidance pack template |  | 3d? | 2026-08-05 | 2026-08-07 | 91 | 2026-10-29 | 2026-11-02 | Documents |
| 94 | 9.2 | Build clinical question generation workflow |  | 3d? | 2026-08-10 | 2026-08-12 | 93 | 2026-11-03 | 2026-11-05 | Documents |
| 95 | 9.3 | Add doctor-specific disclaimer and review checklist |  | 2d? | 2026-08-13 | 2026-08-14 | 94 | 2026-11-06 | 2026-11-09 | Documents |
| 96 | 9.4 | Export and test doctor guidance pack |  | 2d? | 2026-08-17 | 2026-08-18 | 95 | 2026-11-10 | 2026-11-11 | Documents |
| 97 | 9.M | Milestone: Phase 9 complete | milestone | 0d? | 2026-08-18 | 2026-08-18 | 96 | 2026-11-11 | 2026-11-11 | Documents |
| 98 | 10 | **Phase 10: Admin knowledge and template manager** |  | 20d? | 2026-07-15 | 2026-08-11 |  | 2026-10-08 | 2026-11-04 |  |
| 99 | 10.1 | Build admin roles and access control |  | 3d? | 2026-07-15 | 2026-07-17 | 84 | 2026-10-08 | 2026-10-12 | Backend |
| 100 | 10.2 | Build source metadata manager |  | 4d? | 2026-07-20 | 2026-07-23 | 99 | 2026-10-13 | 2026-10-16 | Backend |
| 101 | 10.3 | Build question and document template editor |  | 5d? | 2026-07-24 | 2026-07-30 | 100 | 2026-10-19 | 2026-10-23 | Backend |
| 102 | 10.4 | Build prompt and disclaimer versioning |  | 4d? | 2026-07-31 | 2026-08-05 | 101 | 2026-10-26 | 2026-10-29 | Backend |
| 103 | 10.5 | Build knowledge base audit review view |  | 4d? | 2026-08-06 | 2026-08-11 | 102 | 2026-10-30 | 2026-11-04 | Backend |
| 104 | 10.M | Milestone: Phase 10 complete | milestone | 0d? | 2026-08-11 | 2026-08-11 | 103 | 2026-11-04 | 2026-11-04 | Backend |
| 105 | 11 | **Phase 11: Android and iOS app MVP** |  | 40d? | 2026-08-05 | 2026-09-29 |  | 2026-10-29 | 2026-12-23 |  |
| 106 | 11.1 | Create MAUI app shell and shared services |  | 5d? | 2026-08-05 | 2026-08-11 | 91 | 2026-10-29 | 2026-11-04 | Mobile |
| 107 | 11.2 | Integrate Firebase Authentication |  | 5d? | 2026-08-12 | 2026-08-18 | 106 | 2026-11-05 | 2026-11-11 | Mobile |
| 108 | 11.3 | Build dashboard and claim workspace screens |  | 6d? | 2026-08-19 | 2026-08-26 | 107 | 2026-11-12 | 2026-11-19 | Mobile |
| 109 | 11.4 | Build condition intake and question engine screens |  | 8d? | 2026-08-27 | 2026-09-07 | 108 | 2026-11-20 | 2026-12-01 | Mobile |
| 110 | 11.5 | Build evidence checklist and upload flow |  | 7d? | 2026-09-08 | 2026-09-16 | 109 | 2026-12-02 | 2026-12-10 | Mobile |
| 111 | 11.6 | Build AI draft review and document download screens |  | 6d? | 2026-09-17 | 2026-09-24 | 110 | 2026-12-11 | 2026-12-18 | Mobile |
| 112 | 11.7 | Complete Android and iOS device testing |  | 3d? | 2026-09-25 | 2026-09-29 | 111 | 2026-12-21 | 2026-12-23 | Mobile |
| 113 | 11.M | Milestone: Phase 11 complete | milestone | 0d? | 2026-09-29 | 2026-09-29 | 112 | 2026-12-23 | 2026-12-23 | Mobile |
| 114 | 12 | **Phase 12: Security, privacy and production hardening** |  | 30d? | 2026-08-05 | 2026-09-15 |  | 2026-10-29 | 2026-12-09 |  |
| 115 | 12.1 | Review RBAC enforcement and audit logging |  | 5d? | 2026-08-05 | 2026-08-11 | 91 | 2026-10-29 | 2026-11-04 | Security / QA |
| 116 | 12.2 | Build data export and deletion workflows |  | 5d? | 2026-08-12 | 2026-08-18 | 115 | 2026-11-05 | 2026-11-11 | Security / QA |
| 117 | 12.3 | Create backup and disaster recovery process |  | 4d? | 2026-08-19 | 2026-08-24 | 116 | 2026-11-12 | 2026-11-17 | Security / QA |
| 118 | 12.4 | Add rate limiting, monitoring and error alerts |  | 4d? | 2026-08-25 | 2026-08-28 | 117 | 2026-11-18 | 2026-11-23 | Security / QA |
| 119 | 12.5 | Add consent tracking and AI disclosure tracking |  | 4d? | 2026-08-31 | 2026-09-03 | 118 | 2026-11-24 | 2026-11-27 | Security / QA |
| 120 | 12.6 | Draft privacy policy, terms and support process |  | 4d? | 2026-09-04 | 2026-09-09 | 119 | 2026-11-30 | 2026-12-03 | Security / QA |
| 121 | 12.7 | Prepare penetration test and remediation buffer |  | 4d? | 2026-09-10 | 2026-09-15 | 120 | 2026-12-04 | 2026-12-09 | Security / QA |
| 122 | 12.M | Milestone: Phase 12 complete | milestone | 0d? | 2026-09-15 | 2026-09-15 | 121 | 2026-12-09 | 2026-12-09 | Security / QA |

Notes:
- 92: The app generates a doctor-facing guidance pack with clinical questions and careful disclaimers.
- 93: Create a separate doctor-facing document structure.
- 94: Use condition facts and evidence gaps to prepare doctor appointment questions.
- 95: Make clear the document does not ask the doctor to provide legal advice or a DVA decision.
- 96: Generate DOCX/PDF and verify readability.
- 97: The app generates a doctor-facing guidance pack with clinical questions and careful disclaimers.
- 98: An admin can update sources, question wording, templates, prompts and disclaimers without app code changes.
- 99: Restrict knowledge/template editing to authorised admin users.
- 100: Manage approved source titles, URLs, version dates, notes and usage status.
- 101: Allow controlled updates to question text and document templates.
- 102: Version prompts and disclaimers used in AI and exported documents.
- 103: Show what source/template/prompt version was used for each AI output.
- 104: An admin can update sources, question wording, templates, prompts and disclaimers without app code changes.
- 105: Android and iOS can complete the main claim starter pack workflow against the same backend as the web app.
- 106: Set up cross-platform app navigation and backend client services.
- 107: Implement login/session flow for mobile.
- 108: Show workspaces and workspace status on mobile.
- 109: Support the key evidence collection workflow on mobile.
- 110: Upload evidence files/photos and show the gap tracker.
- 111: Review AI outputs and download generated packs.
- 112: Smoke test on real/simulator devices and fix platform-specific issues.
- 113: Android and iOS can complete the main claim starter pack workflow against the same backend as the web app.
- 114: The platform is suitable for a controlled private pilot with sensitive information under strict safeguards.
- 115: Verify all user actions and sensitive operations are permissioned and logged.
- 116: Allow user data export and deletion handling.
- 117: Set backups, restore procedures and recovery expectations.
- 118: Improve abuse protection and operational visibility.
- 119: Record accepted consent and AI-use disclosure versions.
- 120: Prepare launch/pilot legal-adjacent operational material for review.
- 121: Run security review preparation and fix priority findings.
- 122: The platform is suitable for a controlled private pilot with sensitive information under strict safeguards.

| ID | WBS | Task | Type | Duration | Start | Finish | Predecessors | Baseline start | Baseline finish | Resources |
| --- | --- | --- | --- | --- | --- | --- | --- | --- | --- | --- |
| 123 | 13 | **Phase 13: Private pilot** |  | 30d? | 2026-09-30 | 2026-11-10 |  | 2026-12-24 | 2027-02-03 |  |
| 124 | 13.1 | Recruit and onboard private pilot users |  | 5d? | 2026-09-30 | 2026-10-06 | 104, 113, 122 | 2026-12-24 | 2026-12-30 | Pilot / Operations |
| 125 | 13.2 | Run support and feedback capture process |  | 5d? | 2026-10-07 | 2026-10-13 | 124 | 2026-12-31 | 2027-01-06 | Pilot / Operations |
| 126 | 13.3 | Test veteran claim-preparation workflow |  | 5d? | 2026-10-14 | 2026-10-20 | 125 | 2027-01-07 | 2027-01-13 | Pilot / Operations |
| 127 | 13.4 | Review doctor and advocate pack usefulness |  | 5d? | 2026-10-21 | 2026-10-27 | 126 | 2027-01-14 | 2027-01-20 | Pilot / Operations |
| 128 | 13.5 | Fix priority issues from pilot |  | 6d? | 2026-10-28 | 2026-11-04 | 127 | 2027-01-21 | 2027-01-28 | Pilot / Operations |
| 129 | 13.6 | Prepare pilot outcome report and go/no-go decision |  | 4d? | 2026-11-05 | 2026-11-10 | 128 | 2027-01-29 | 2027-02-03 | Pilot / Operations |
| 130 | 13.M | Milestone: Phase 13 complete | milestone | 0d? | 2026-11-10 | 2026-11-10 | 129 | 2027-02-03 | 2027-02-03 | Pilot / Operations |
| 131 | 14 | **Phase 14: Commercial launch preparation** |  | 30d? | 2026-11-11 | 2026-12-22 |  | 2027-02-04 | 2027-03-17 |  |
| 132 | 14.1 | Decide and implement billing/subscription model |  | 5d? | 2026-11-11 | 2026-11-17 | 130 | 2027-02-04 | 2027-02-10 | Pilot / Operations |
| 133 | 14.2 | Build organisation account model |  | 5d? | 2026-11-18 | 2026-11-24 | 132 | 2027-02-11 | 2027-02-17 | Pilot / Operations |
| 134 | 14.3 | Set up support inbox and help centre |  | 5d? | 2026-11-25 | 2026-12-01 | 133 | 2027-02-18 | 2027-02-24 | Pilot / Operations |
| 135 | 14.4 | Create marketing site and onboarding content |  | 5d? | 2026-12-02 | 2026-12-08 | 134 | 2027-02-25 | 2027-03-03 | Pilot / Operations |
| 136 | 14.5 | Prepare App Store and Play Store materials |  | 5d? | 2026-12-09 | 2026-12-15 | 135 | 2027-03-04 | 2027-03-10 | Pilot / Operations |
| 137 | 14.6 | Complete launch readiness and production operations |  | 5d? | 2026-12-16 | 2026-12-22 | 136 | 2027-03-11 | 2027-03-17 | Pilot / Operations |
| 138 | 14.M | Milestone: Phase 14 complete | milestone | 0d? | 2026-12-22 | 2026-12-22 | 137 | 2027-03-17 | 2027-03-17 | Pilot / Operations |

Notes:
- 123: Pilot evidence shows the workflow is useful, understandable, safe and worth commercialising.
- 124: Bring in a small controlled group of veterans, doctors or advocates.
- 125: Collect structured feedback and support issues.
- 126: Measure whether users can complete the claim workspace and starter pack workflow.
- 127: Get feedback on clinical questions, pack clarity and disclaimers.
- 128: Resolve critical usability, safety, content and technical issues.
- 129: Summarise findings and decide what is required before commercial launch.
- 130: Pilot evidence shows the workflow is useful, understandable, safe and worth commercialising.
- 131: The product can onboard paying users, support them and operate reliably in production.
- 132: Add payment or subscription flow once the pilot value is proven.
- 133: Prepare for advocate/provider/organisation access if required.
- 134: Create operational support channels and self-help content.
- 135: Explain the product safely and clearly without overclaiming.
- 136: Prepare screenshots, copy, privacy details and review material.
- 137: Confirm monitoring, incident response, backups, support and release process.
- 138: The product can onboard paying users, support them and operate reliably in production.
